# Remote Lab Capstone

How a schedule from MS Project changed from version to version. A marks actual dates.

## Version 1 (saved 2017-06-20)

Note of the change: Schedule update

| ID | Task | Duration | Start | Finish | Predecessors | Complete | Total float | Constraint |
| --- | --- | --- | --- | --- | --- | --- | --- | --- |
| 1 | Research AD Converter | 6d | 2017-05-12 A | 2017-05-19 A |  | 100% |  |  |
| 2 | Research Linear Regulator Replacement | 6d | 2017-05-12 A | 2017-05-19 A |  | 100% |  |  |
| 3 | Research 34-channel LA | 6d | 2017-05-12 A | 2017-05-19 A |  | 100% |  |  |
| 4 | Investigate Previous Board Schematics | 6d | 2017-05-12 A | 2017-05-19 A |  | 100% |  |  |
| 5 | Research Alternative Options to VB | 6d | 2017-05-12 A | 2017-05-19 A |  | 100% |  |  |
| 6 | Research Browser Based Remote Desktop Options | 6d | 2017-05-12 A | 2017-05-19 A |  | 100% |  |  |
| 7 | Ready to Create Contract | 0d | 2017-05-19 A | 2017-05-19 A | 1, 2, 3, 4, 6 | 100% |  |  |
| 8 | Create Contract Draft #1 | 7d | 2017-05-22 A | 2017-05-30 A | 7 | 100% |  | start no earlier than 2017-05-22 |
| 9 | Finalize Contract Details | 7d | 2017-05-31 A | 2017-06-08 A | 8 | 100% |  |  |
| 10 | Capstone 1 Complete | 0d | 2017-06-08 A | 2017-06-08 A | 9 | 100% |  |  |
| 11 | Review Previous PCB Design | 4d | 2017-06-09 A | 2017-06-14 A | 10 | 100% |  | start no later than 2017-06-14 |
| 12 | Modify PCB to Include New Components | 7d | 2017-06-26 | 2017-07-04 | 13, 33, 39, 40, 41, 42 |  | 0.12d | start no earlier than 2017-06-14 |
| 13 | Order Parts | 12d | 2017-05-22 A | 2017-06-06 | 7 | 50% | 13.12d | start no later than 2017-05-25 |
| 14 | Research and Buy Case | 7d | 2017-07-10 | 2017-07-18 | 12, 13, 20 |  | 4.12d |  |
| 15 | Fix Old Software | 7d | 2017-06-09 A | 2017-06-19 A | 10 | 100% |  |  |
| 16 | Update Software to work with new hardware | 21d | 2017-07-10 | 2017-08-07 | 12, 13, 15, 20, 35, 36 |  | 0.12d |  |
| 17 | Contact UW-IT to figure out remote access | 40d | 2017-05-26 A | 2017-07-20 |  | 50% | 17.25d |  |
| 18 | Test remote desktop access | 1d | 2017-07-21 | 2017-07-21 | 17 |  | 22.12d |  |
| 19 | Get software installed on lab computer | 7d | 2017-08-08 A | 2017-08-16 | 17, 16 | 75% | 4.12d |  |
| 20 | Order PCB | 0d | 2017-07-07 | 2017-07-07 | 12, 34 |  | 0.12d |  |
| 21 | Modify Case | 21d | 2017-07-19 | 2017-08-16 | 14 |  | 4.12d |  |
| 22 | Component Testing | 5d | 2017-06-27 | 2017-07-03 | 23 |  | 22.12d |  |
| 23 | Parts shipping delay | 14d | 2017-06-07 | 2017-06-26 | 13 |  | 22.12d |  |
| 24 | Ready to build PCB | 0d | 2017-07-27 | 2017-07-27 | 22, 26 |  | 4d |  |
| 25 | System Testing | 7d | 2017-08-08 | 2017-08-16 | 28, 16 |  | 0.12d |  |
| 26 | PCB Shipping Delay | 14d | 2017-07-10 | 2017-07-27 | 20 |  | 4.12d |  |
| 27 | Final System Test | 3d | 2017-08-17 | 2017-08-21 | 25, 21, 19, 18 |  | 4.12d |  |
| 28 | Assemble/Solder PCB | 3d | 2017-07-28 | 2017-08-01 | 24 |  | 4.12d |  |
| 29 | Ethics Paper(s) | 7d | 2017-06-09 | 2017-06-19 | 10 |  | 63.12d |  |
| 30 | Capstone Poster & PPT | 14d | 2017-07-10 | 2017-07-27 | 20 |  | 35.12d |  |
| 31 | Final Documentation | 14d | 2017-08-28 | 2017-09-15 | 25, 27, 37 |  | 0d |  |
| 32 | Demo Final System | 1d | 2017-08-18 | 2017-08-18 | 27, 21 |  |  |  |
| 33 | Create Schematic for New Motherboard | 7d | 2017-06-15 | 2017-06-23 | 11 |  |  |  |
| 34 | Design review for schematic and PCB | 3d | 2017-07-05 | 2017-07-07 | 33, 12 |  |  |  |
| 35 | Restrict GUI Access | 5.12d | 2017-06-13 A | 2017-06-19 A | 10 | 100% |  |  |
| 36 | Design New experiment windows | 2d | 2017-06-30 | 2017-07-03 |  |  |  |  |
| 37 | Update user guides | 7d | 2017-08-17 | 2017-08-28 | 25 |  |  |  |
| 38 | Integrate daughterboard team's software | 5d | 2017-08-17 | 2017-08-24 | 15, 36, 19, 25 |  |  |  |
| 39 | Voltage divider for ADC | 2d? | 2017-06-20 | 2017-06-21 |  |  | 2.12d | start no earlier than 2017-06-20 |
| 40 | Test Linear Regulators | 1d | 2017-06-20 | 2017-06-20 |  |  |  |  |
| 41 | Map Daughterboard Connectors | 1d | 2017-06-20 | 2017-06-20 |  |  |  |  |
| 42 | Second LA connection | 1d | 2017-06-20 | 2017-06-20 |  |  |  |  |
| 43 | Convert to C# | 1d | 2017-06-18 | 2017-06-18 |  |  |  |  |

## Version 2 (saved 2017-06-29)

Note of the change: schedule update

Last finish 2017-09-15 → 2017-08-16 (-30d). Complete tasks 13 → 21.

Added:

| ID | Task | Duration | Start | Finish | Predecessors |
| --- | --- | --- | --- | --- | --- |
| 44 | Write Library for Digital Pots | 2d | 2017-06-09 | 2017-06-12 | 10 |
| 45 | Create function to change variable volt | 2d | 2017-06-09 | 2017-06-12 | 10 |
| 46 | Write code to control 68/34 LA | 2d | 2017-06-09 | 2017-06-12 | 10 |

Changed:

| ID | Task | Start | Finish | Duration | Complete | Total float | Predecessors | Other |
| --- | --- | --- | --- | --- | --- | --- | --- | --- |
| 12 | Modify PCB to Include New Components | 2017-06-26 → 2017-06-30 (+4d) | 2017-07-04 → 2017-07-11 (+7d) |  |  | 0.12d → -13.12d |  |  |
| 14 | Research and Buy Case | 2017-07-10 → 2017-06-22 A (-18d) | 2017-07-18 → 2017-06-30 (-18d) | 7d → 6.25d | 0% → 84% | 4.12d → -6.75d |  | constraint none → finish no later than 2017-06-30 |
| 16 | Update Software to work with new hardware | 2017-07-10 → 2017-07-18 (+8d) | 2017-08-07 → 2017-07-25 (-13d) | 21d → 5d |  | 0.12d → 5d | 12, 13, 15, 20, 35, 36 → 12, 13, 15, 20, 35, 36, 44, 45, 46 |  |
| 17 | Contact UW-IT to figure out remote access |  | 2017-07-20 A |  | 50% → 100% | 17.25d → none |  |  |
| 18 | Test remote desktop access | 2017-07-21 A | 2017-07-21 A |  | 0% → 100% | 22.12d → none |  |  |
| 19 | Get software installed on lab computer | 2017-08-08 A → 2017-06-28 A (-41d) | 2017-08-16 → 2017-06-28 A (-49d) | 7d → 0.25d | 75% → 100% | 4.12d → none |  |  |
| 20 | Order PCB | 2017-07-07 → 2017-07-18 (+11d) | 2017-07-07 → 2017-07-18 (+11d) |  |  | 0.12d → -13.12d |  |  |
| 21 | Modify Case | 2017-07-19 → 2017-07-10 (-9d) | 2017-08-16 → 2017-08-07 (-9d) |  |  | 4.12d → 2.38d | 14 → 23 | constraint none → start no earlier than 2017-07-10 |
| 22 | Component Testing | 2017-06-27 A |  |  | 0% → 75% | 22.12d → 17.38d |  |  |
| 23 | Parts shipping delay | 2017-06-07 A |  |  | 0% → 75% | 22.12d → 3.75d | 13 → 13, 14 |  |
| 25 | System Testing | 2017-08-08 → 2017-08-01 (-7d) | 2017-08-16 → 2017-08-10 (-6d) |  |  | 0.12d → 0d |  |  |
| 26 | PCB Shipping Delay | 2017-07-10 → 2017-07-18 (+8d) |  | 14d → 7d |  | 4.12d → 0d |  |  |
| 27 | Final System Test | 2017-08-17 → 2017-08-10 (-7d) | 2017-08-21 → 2017-08-15 (-6d) |  |  | 4.12d → 0d |  |  |
| 28 | Assemble/Solder PCB | 2017-07-28 → 2017-07-27 (-1d) |  |  |  | 4.12d → 0d |  |  |
| 29 | Ethics Paper(s) | 2017-06-09 → 2017-07-24 (+45d) | 2017-06-19 → 2017-08-01 (+43d) |  |  | 63.12d → 10.38d | 10 → none | constraint none → start no earlier than 2017-07-24 |
| 30 | Capstone Poster & PPT | 2017-07-10 → 2017-07-18 (+8d) | 2017-07-27 → 2017-08-07 (+11d) |  |  | 35.12d → 7d |  |  |
| 31 | Final Documentation | 2017-08-28 → 2017-07-18 (-41d) | 2017-09-15 → 2017-08-07 (-39d) |  |  | 0d → 7d | 25, 27, 37 → 20 | constraint none → start no earlier than 2017-06-28 |
| 32 | Demo Final System | 2017-08-18 → 2017-08-15 (-3d) | 2017-08-18 → 2017-08-16 (-2d) |  |  | none → 0d |  |  |
| 33 | Create Schematic for New Motherboard | 2017-06-15 A | 2017-06-23 → 2017-06-30 (+7d) | 7d → 11.25d | 0% → 47% | none → -13.12d |  | resources Andrew; Paolo → Andrew; Gregory |
| 34 | Design review for schematic and PCB | 2017-07-05 → 2017-07-11 (+6d) | 2017-07-07 → 2017-07-18 (+11d) | 3d → 5.12d |  | none → -13.12d |  |  |
| 36 | Design New experiment windows | 2017-06-30 → 2017-05-12 (-49d) | 2017-07-03 → 2017-05-15 (-49d) |  |  | none → 50.38d |  |  |
| 37 | Update user guides | 2017-08-17 → 2017-08-10 (-7d) | 2017-08-28 → 2017-08-15 (-13d) | 7d → 3d |  | none → 1d |  |  |
| 38 | Integrate daughterboard team's software | 2017-08-17 → 2017-08-10 (-7d) | 2017-08-24 → 2017-08-14 (-10d) | 5d → 2d |  | none → 2d |  |  |
| 39 | Voltage divider for ADC | 2017-06-20 A | 2017-06-21 A |  | 0% → 100% | 2.12d → none |  |  |
| 40 | Test Linear Regulators | 2017-06-20 A | 2017-06-20 A |  | 0% → 100% |  |  |  |
| 41 | Map Daughterboard Connectors | 2017-06-20 A | 2017-06-20 A |  | 0% → 100% |  |  |  |
| 42 | Second LA connection | 2017-06-20 A | 2017-06-20 A |  | 0% → 100% |  |  |  |
| 43 | Convert to C# | 2017-06-18 A | 2017-06-18 A |  | 0% → 100% |  |  |  |

## Version 3 (saved 2017-07-06)

Note of the change: Schedule Update

Last finish stays 2017-08-16. Complete tasks 21 → 24.

Removed: 36 Design New experiment windows; 46 Write code to control 68/34 LA

Changed:

| ID | Task | Start | Finish | Complete | Total float | Predecessors | Other |
| --- | --- | --- | --- | --- | --- | --- | --- |
| 12 | Modify PCB to Include New Components | 2017-06-30 A |  | 0% → 25% | -13.12d → 0d |  |  |
| 14 | Research and Buy Case |  | 2017-06-30 A | 84% → 100% | -6.75d → none |  |  |
| 16 | Update Software to work with new hardware |  |  |  |  | 12, 13, 15, 20, 35, Design New experiment windows, 43, 44, Write code to control 68/34 LA → 12, 13, 15, 20, 35, 43, 44 |  |
| 22 | Component Testing |  | 2017-07-03 A | 75% → 100% | 17.38d → none |  |  |
| 33 | Create Schematic for New Motherboard |  | 2017-06-30 A | 47% → 100% | -13.12d → none |  |  |
| 37 | Integrate daughterboard team's software |  |  |  |  | 15, Design New experiment windows, 19, 25 → 15, 19, 25 |  |
| 43 | Write Library for Digital Pots | 2017-06-09 → 2017-06-30 A (+21d) | 2017-06-12 → 2017-07-03 (+21d) | 0% → 50% | 30.38d → 15.38d |  |  |
| 44 | Create function to change variable volt | 2017-06-09 → 2017-06-30 A (+21d) | 2017-06-12 → 2017-07-03 (+21d) | 0% → 50% | 30.38d → 15.38d |  | constraint none → start no earlier than 2017-06-30 |
